Schedule from OmniPlan.
Project start 2019-01-21

## Resources

| Resource | Group |
| --- | --- |
| 资源 1 | staff |
| 设备 1 | equipment |
| 素材 1 | material |
| 群组 1 | group |
| Bom Wang | staff |
| Yu Zhang | staff |
| Daojie Ren | staff |
| Zhenzhen Chen | staff |
| Tony Wei | staff |

## Schedule

| ID | WBS | Task | Type | Predecessors | Constraint | Resources | Work |
| --- | --- | --- | --- | --- | --- | --- | --- |
| 1 | 1 | **立项** |  |  |  |  |  |
| 2 | 1.1 | Kick Off |  |  | start no earlier than 2019-03-01 |  | 8h |
| 3 | 2 | **文档** |  |  | start no earlier than 2019-01-21 |  |  |
| 4 | 2.1 | **Design Specification** |  |  |  |  |  |
| 5 | 2.1.1 | Document |  |  |  | Bom Wang | 168h |
| 6 | 2.1.2 | Review |  | 5 |  | Bom Wang | 8h |
| 7 | 2.2 | **Architecture Specification** |  | 4 |  |  |  |
| 8 | 2.2.1 | Document |  |  |  | Bom Wang | 40h |
| 9 | 2.2.2 | Review |  | 8 |  | Bom Wang | 8h |
| 10 | 2.3 | **Verification Plan** |  |  |  |  |  |
| 11 | 2.3.1 | **Feature List - Part I** |  |  |  |  |  |
| 12 | 2.3.1.1 | Document |  |  |  | Yu Zhang | 40h |
| 13 | 2.3.1.2 | Review |  | 12 |  | Yu Zhang | 8h |
| 14 | 2.3.2 | **Feature List - Part II** |  | 11 |  |  |  |
| 15 | 2.3.2.1 | Document |  |  |  | Yu Zhang | 120h |
| 16 | 2.3.2.2 | Review |  | 15 |  | Yu Zhang | 8h |
| 17 | 2.3.3 | **Testcase List** |  | 14 |  |  |  |
| 18 | 2.3.3.1 | Document |  |  |  | Yu Zhang | 80h |
| 19 | 2.3.3.2 | Review |  | 18 |  | Yu Zhang | 8h |
| 20 | 2.3.4 | **Verification Plan** |  | 19 |  |  |  |
| 21 | 2.3.4.1 | Document |  |  |  | Yu Zhang | 24h |
| 22 | 2.3.4.2 | Review |  | 21 |  | Yu Zhang | 8h |
| 23 | 2.4 | Document Complete | milestone |  | start no earlier than 2019-03-11 |  |  |
| 24 | 3 | **设计** |  |  |  |  |  |
| 25 | 3.1 | Analog Design |  | 7 |  | Zhenzhen Chen | 320h |

| ID | WBS | Task | Type | Predecessors | Constraint | Resources | Work |
| --- | --- | --- | --- | --- | --- | --- | --- |
| 26 | 3.2 | **Digital Coding** |  | 7 |  |  |  |
| 27 | 3.2.1 | RTL Coding |  |  |  |  | 160h |
| 28 | 3.2.2 | Module-level Sim |  | 27 |  |  | 40h |
| 29 | 3.2.3 | Review |  | 28 |  |  | 8h |
| 30 | 3.2.4 | RTL Ready | milestone |  | start no earlier than 2019-04-04 |  |  |
| 31 | 3.3 | **Verification** |  | 10 |  |  |  |
| 32 | 3.3.1 | Coding |  |  |  | Yu Zhang | 80h |
| 33 | 3.3.2 | RTL-level Sim |  | 32 |  | Yu Zhang | 160h |
| 34 | 3.3.3 | Coverage |  | 33 |  | Yu Zhang | 80h |
| 35 | 3.3.4 | Gate-level Sim |  | 42 |  | Yu Zhang | 160h |
| 36 | 3.3.5 | Review |  | 35 |  | Yu Zhang | 8h |
| 37 | 3.4 | **Digital Implement** |  | 26 |  |  |  |
| 38 | 3.4.1 | Lint |  |  |  | Bom Wang | 16h |
| 39 | 3.4.2 | Synthsis |  | 38 |  | Bom Wang | 40h |
| 40 | 3.4.3 | Formal |  | 39 |  | Bom Wang | 32h |
| 41 | 3.4.4 | APR |  | 40 |  | Daojie Ren [50%] | 40h |
| 42 | 3.4.5 | Netlist Ready | milestone |  | start no earlier than 2019-05-03 |  |  |
| 43 | 3.4.6 | STA |  | 41 |  | Bom Wang | 40h |
| 44 | 3.4.7 | Power |  | 43 |  | Bom Wang | 16h |
| 45 | 3.5 | **FPGA Prototype** |  | 41SS |  |  |  |
| 46 | 3.5.1 | Coding |  |  |  | Bom Wang | 40h |
| 47 | 3.5.2 | Emulate |  | 46 |  | Tony Wei | 120h |
| 48 | 3.6 | RTL Freeze | milestone |  | start no earlier than 2019-06-03 |  |  |
| 49 | 3.7 | Digital Backend |  |  |  |  | 320h |
| 50 | 3.8 | Full Chip Mixed signal Simulation |  | 43 |  | Zhenzhen Chen | 120h |

| ID | WBS | Task | Type | Predecessors | Constraint | Work |
| --- | --- | --- | --- | --- | --- | --- |
| 51 | 4 | **检查** |  | 24 |  |  |
| 52 | 4.1 | Design Review |  |  |  | 8h |
| 53 | 4.2 | Verification Review |  |  |  | 8h |
| 54 | 4.3 | Layout Review |  |  |  | 8h |
| 55 | 4.4 | Tapeout Review |  |  |  | 8h |
| 56 | 5 | Tapeout | milestone |  | start no earlier than 2019-06-17 |  |
